# MediCita

Schedule from MS Project XML, 2026-10-08 to 2026-12-23.

## Calendars

- Lunes a viernes: Mon-Fri 08:00-12:00, 13:00-17:00; Sat-Sun off.

## Resources

| Resource | Rate |
| --- | --- |
| Project Manager | 10 |
| Coordinador Técnico y de Producto | 9 |
| Analista de requisitos y UX/UI | 8 |
| Desarrollador full-stack | 9 |
| Calidad, pruebas y documentación | 7 |

## Schedule

| ID | WBS | Task | Type | Duration | Start | Finish | Predecessors | Resources |
| --- | --- | --- | --- | --- | --- | --- | --- | --- |
| 1 | 1 | **Sistema MediCita** |  | 55d | 2026-10-08 | 2026-12-23 |  |  |
| 2 | 1.1 | **Planificación** |  | 10d | 2026-10-08 | 2026-10-21 |  |  |
| 3 | 1.1.1 | **Inicio del proyecto** |  | 2d | 2026-10-08 | 2026-10-09 |  |  |
| 4 | 1.1.1.1 | Descripción del sistema y enfoque de gestión |  | 1d | 2026-10-08 | 2026-10-08 |  | Project Manager |
| 5 | 1.1.1.2 | Roles y responsabilidades del equipo |  | 1d | 2026-10-09 | 2026-10-09 | 4 | Project Manager |
| 6 | 1.1.2 | **Plan del proyecto** |  | 4d | 2026-10-16 | 2026-10-21 |  |  |
| 7 | 1.1.2.1 | EDT y cronograma |  | 2d | 2026-10-16 | 2026-10-19 | 16 | Project Manager |
| 8 | 1.1.2.2 | Presupuesto |  | 2d | 2026-10-20 | 2026-10-21 | 7 | Project Manager |
| 9 | 1.1.2.3 | Riesgos y comunicaciones |  | 2d | 2026-10-20 | 2026-10-21 | 7 | Calidad, pruebas y documentación |
| 10 | 1.1.3 | Hito: Etapa 1 aprobada | milestone | 0d | 2026-10-09 | 2026-10-09 | 5 |  |
| 11 | 1.2 | **Análisis** |  | 5d | 2026-10-12 | 2026-10-16 |  |  |
| 12 | 1.2.1 | **Requisitos** |  | 2d | 2026-10-12 | 2026-10-13 |  |  |
| 13 | 1.2.1.1 | Requisitos funcionales y no funcionales |  | 2d | 2026-10-12 | 2026-10-13 | 10 | Analista de requisitos y UX/UI |
| 14 | 1.2.1.2 | Identificación de stakeholders |  | 2d | 2026-10-12 | 2026-10-13 | 10 | Project Manager |
| 15 | 1.2.2 | **Historias de usuario** |  | 3d | 2026-10-14 | 2026-10-16 |  |  |
| 16 | 1.2.2.1 | Historias con criterios de aceptación |  | 2d | 2026-10-14 | 2026-10-15 | 13 | Coordinador Técnico y de Producto |
| 17 | 1.2.2.2 | Product Backlog y plan de sprints |  | 1d | 2026-10-16 | 2026-10-16 | 16 | Coordinador Técnico y de Producto |
| 18 | 1.3 | **Diseño** |  | 6d | 2026-10-14 | 2026-10-21 |  |  |
| 19 | 1.3.1 | **Arquitectura y modelado** |  | 4d | 2026-10-14 | 2026-10-19 |  |  |
| 20 | 1.3.1.1 | Diagrama de arquitectura |  | 2d | 2026-10-14 | 2026-10-15 | 13 | Desarrollador full-stack |
| 21 | 1.3.1.2 | Casos de uso y diagramas de flujo |  | 2d | 2026-10-16 | 2026-10-19 | 16 | Analista de requisitos y UX/UI |
| 22 | 1.3.2 | **Base de datos** |  | 4d | 2026-10-16 | 2026-10-21 |  |  |
| 23 | 1.3.2.1 | Modelo entidad-relación y diccionario |  | 2d | 2026-10-16 | 2026-10-19 | 20, 16 | Desarrollador full-stack |
| 24 | 1.3.2.2 | Script SQL en PostgreSQL |  | 2d | 2026-10-20 | 2026-10-21 | 23 | Desarrollador full-stack |

| ID | WBS | Task | Type | Duration | Start | Finish | Predecessors | Resources |
| --- | --- | --- | --- | --- | --- | --- | --- | --- |
| 25 | 1.3.3 | **Interfaz** |  | 2d | 2026-10-20 | 2026-10-21 |  |  |
| 26 | 1.3.3.1 | Prototipos de pantallas |  | 2d | 2026-10-20 | 2026-10-21 | 21 | Analista de requisitos y UX/UI |
| 27 | 1.3.4 | Hito: Plan del proyecto aprobado | milestone | 0d | 2026-10-21 | 2026-10-21 | 8, 9, 17, 24, 26 |  |
| 28 | 1.4 | **Desarrollo** |  | 40d | 2026-10-22 | 2026-12-16 |  |  |
| 29 | 1.4.1 | **Sprint 1: usuarios y catálogo** |  | 10d | 2026-10-22 | 2026-11-04 |  |  |
| 30 | 1.4.1.1 | Registro e inicio de sesión (HU01, HU02) |  | 10d | 2026-10-22 | 2026-11-04 | 27 | Desarrollador full-stack |
| 31 | 1.4.1.2 | Especialidades, médicos y horarios (HU08, HU09) |  | 10d | 2026-10-22 | 2026-11-04 | 27 | Coordinador Técnico y de Producto |
| 32 | 1.4.2 | **Sprint 2: citas** |  | 10d | 2026-11-05 | 2026-11-18 |  |  |
| 33 | 1.4.2.1 | Disponibilidad y reserva (HU03 a HU05) |  | 10d | 2026-11-05 | 2026-11-18 | 30, 31 | Desarrollador full-stack |
| 34 | 1.4.2.2 | Cancelación y agenda de recepción (HU06, HU07) |  | 10d | 2026-11-05 | 2026-11-18 | 30, 31 | Coordinador Técnico y de Producto |
| 35 | 1.4.3 | **Sprint 3: atención y recordatorios** |  | 10d | 2026-11-19 | 2026-12-02 |  |  |
| 36 | 1.4.3.1 | Agenda y seguimiento del médico (HU10, HU13) |  | 10d | 2026-11-19 | 2026-12-02 | 33, 34 | Desarrollador full-stack |
| 37 | 1.4.3.2 | Recordatorio y confirmación (HU11, HU12) |  | 10d | 2026-11-19 | 2026-12-02 | 33, 34 | Coordinador Técnico y de Producto |
| 38 | 1.4.4 | **Sprint 4: reportes** |  | 10d | 2026-12-03 | 2026-12-16 |  |  |
| 39 | 1.4.4.1 | Historial y resumen mensual (HU14, HU15) |  | 10d | 2026-12-03 | 2026-12-16 | 36, 37 | Desarrollador full-stack |
| 40 | 1.4.4.2 | Recordatorio por WhatsApp (HU16) |  | 10d | 2026-12-03 | 2026-12-16 | 36, 37 | Coordinador Técnico y de Producto |
| 41 | 1.4.5 | Hito: Desarrollo terminado | milestone | 0d | 2026-12-16 | 2026-12-16 | 39, 40 |  |
| 42 | 1.5 | **Pruebas** |  | 4d | 2026-12-17 | 2026-12-22 |  |  |
| 43 | 1.5.1 | **Pruebas funcionales** |  | 2d | 2026-12-17 | 2026-12-18 |  |  |
| 44 | 1.5.1.1 | Pruebas de aceptación por historia |  | 2d | 2026-12-17 | 2026-12-18 | 41 | Coordinador Técnico y de Producto |
| 45 | 1.5.2 | **Pruebas no funcionales** |  | 2d | 2026-12-17 | 2026-12-18 |  |  |
| 46 | 1.5.2.1 | Pruebas de seguridad y rendimiento |  | 2d | 2026-12-17 | 2026-12-18 | 41 | Calidad, pruebas y documentación |
| 47 | 1.5.2.2 | Pruebas de accesibilidad |  | 2d | 2026-12-17 | 2026-12-18 | 41 | Analista de requisitos y UX/UI |
| 48 | 1.5.3 | **Corrección de errores** |  | 2d | 2026-12-21 | 2026-12-22 |  |  |
| 49 | 1.5.3.1 | Registro y corrección de errores |  | 2d | 2026-12-21 | 2026-12-22 | 44, 46, 47 | Desarrollador full-stack |

| ID | WBS | Task | Type | Duration | Start | Finish | Predecessors | Resources |
| --- | --- | --- | --- | --- | --- | --- | --- | --- |
| 50 | 1.6 | **Cierre** |  | 3d | 2026-12-21 | 2026-12-23 |  |  |
| 51 | 1.6.1 | **Implantación** |  | 3d | 2026-12-21 | 2026-12-23 |  |  |
| 52 | 1.6.1.1 | Despliegue con Docker |  | 1d | 2026-12-23 | 2026-12-23 | 49 | Desarrollador full-stack |
| 53 | 1.6.1.2 | Manual de usuario y capacitación |  | 3d | 2026-12-21 | 2026-12-23 | 47 | Analista de requisitos y UX/UI |
| 54 | 1.6.2 | **Cierre del proyecto** |  | 1d | 2026-12-23 | 2026-12-23 |  |  |
| 55 | 1.6.2.1 | Acta de cierre y lecciones aprendidas |  | 1d | 2026-12-23 | 2026-12-23 | 49 | Project Manager |
| 56 | 1.6.3 | Hito: Proyecto cerrado | milestone | 0d | 2026-12-23 | 2026-12-23 | 52, 53, 55 |  |
